# Captive Portal UCAC-ICAM - Planning Reel

Schedule from GanttProject, 2025-09-01 to 2026-01-20, baseline: Planning Previsionnel.
UCAC-ICAM
Planning REEL du Projet de Portail Captif WiFi UCAC-ICAM. / Periode : 1er septembre 2025 au 20 janvier 2026. / Ce planning integre les interruptions reelles (autres projets academiques, / examens, conges) et montre l'ecart avec le planning previsionnel initial. / ECARTS PRINCIPAUX : / - 3 periodes de pause totalisant ~35 jours / - Pause 1 (26/09-12/10) : Travail sur d'autres projets academiques / - Pause 2 (22/11-01/12) : Examens semestriels + projets paralleles / - Pause 3 (21/12-28/12) : Conges de Noel / - Soutenance decalee du 16 au 20 janvier (+4 jours) / - Duree effective de travail : ~106 jours sur 141 jours calendaires

## Calendars

- Project calendar: Mon-Fri working; Sat-Sun off. Exceptions (off unless hours are given): 2025-12-25 (Noel), 2026-01-01 (Jour de l'An).

## Resources

| Resource | Group |
| --- | --- |
| Valerdy | Developpeur Principal / Chef de Projet |
| Claude (Assistant IA) | Assistant Developpement IA |

## Schedule

| ID | WBS | Task | Type | Duration | Start | Finish | Predecessors | Complete | Baseline start | Baseline finish | Baseline duration | Resources |
| --- | --- | --- | --- | --- | --- | --- | --- | --- | --- | --- | --- | --- |
| 1 | 1 | **Phase 1: Analyse et Conception** |  | 36d | 2025-09-01 | 2025-10-20 |  | 100% | 2025-09-01 | 2025-10-03 | 25d |  |
| 2 | 1.1 | Analyse des besoins UCAC-ICAM |  | 8d | 2025-09-01 | 2025-09-10 |  | 100% | 2025-09-01 | 2025-09-12 | 10d | Valerdy |
| 3 | 1.2 | Etude de l'existant (MikroTik, FreeRADIUS) |  | 5d | 2025-09-11 | 2025-09-17 |  | 100% | 2025-09-08 | 2025-09-16 | 7d | Valerdy |
| 4 | 1.3 | Conception UML (Use Cases, Classes, Sequences) |  | 6d | 2025-09-18 | 2025-09-25 | 3 | 100% | 2025-09-15 | 2025-09-26 | 10d | Valerdy |
| 5 | 2 | PAUSE 1: Autres projets academiques |  | 13d | 2025-09-26 | 2025-10-14 | 4 | 100% |  |  |  | Valerdy [0%] |
| 6 | 3 | Maquettes UI/UX (reprise apres pause) |  | 6d | 2025-10-13 | 2025-10-20 | 5 | 100% | 2025-09-22 | 2025-10-01 | 8d | Valerdy |
| 7 | 4 | Jalon: Fin Analyse et Conception | milestone | 0d | 2025-10-20 | 2025-10-20 |  | 100% | 2025-09-30 | 2025-09-30 | 0d |  |
| 8 | 5 | **Phase 2: Developpement Backend** |  | 41d | 2025-10-21 | 2025-12-16 | 6 | 100% | 2025-10-01 | 2025-12-02 | 45d |  |
| 9 | 5.1 | Setup Django + PostgreSQL + Docker Compose |  | 5d | 2025-10-21 | 2025-10-27 |  | 100% | 2025-10-01 | 2025-10-07 | 5d | Claude (Assistant IA) |
| 10 | 5.2 | Modeles Django (User, Profile, Promotion) |  | 9d | 2025-10-28 | 2025-11-07 | 9 | 100% | 2025-10-06 | 2025-10-17 | 10d | Claude (Assistant IA) |
| 11 | 5.3 | Integration FreeRADIUS + tables RADIUS |  | 10d | 2025-11-10 | 2025-11-21 | 10 | 100% | 2025-10-16 | 2025-11-05 | 15d | Claude (Assistant IA) |
| 12 | 6 | PAUSE 2: Examens semestriels + projets |  | 6d | 2025-11-24 | 2025-12-01 | 11 | 100% |  |  |  | Valerdy [0%] |
| 13 | 7 | API REST (ViewSets, Serializers) - reprise |  | 7d | 2025-12-02 | 2025-12-10 | 12 | 100% | 2025-10-31 | 2025-11-13 | 10d | Valerdy [50%]; Claude (Assistant IA) [50%] |
| 14 | 8 | Service de synchronisation RADIUS |  | 4d | 2025-12-11 | 2025-12-16 | 13 | 100% | 2025-11-10 | 2025-11-19 | 8d | Claude (Assistant IA) |
| 15 | 9 | Jalon: Backend Termine | milestone | 0d | 2025-12-16 | 2025-12-16 |  | 100% | 2025-11-20 | 2025-11-20 | 0d |  |
| 16 | 10 | **Phase 3: Developpement Frontend** |  | 25d | 2025-12-02 | 2026-01-07 |  | 100% | 2025-11-01 | 2025-12-29 | 40d |  |
| 17 | 10.1 | Setup Vue.js 3 + Vite + composants |  | 4d | 2025-12-02 | 2025-12-05 |  | 100% | 2025-11-01 | 2025-11-05 | 3d | Claude (Assistant IA) |
| 18 | 10.2 | Pages gestion utilisateurs |  | 7d | 2025-12-08 | 2025-12-16 | 17 | 100% | 2025-11-04 | 2025-11-19 | 12d | Valerdy [50%]; Claude (Assistant IA) [50%] |
| 19 | 10.3 | Pages gestion profils + promotions |  | 4d | 2025-12-17 | 2025-12-22 | 18 | 100% | 2025-11-16 | 2025-11-28 | 10d | Claude (Assistant IA) |
| 20 | 11 | PAUSE 3: Conges de Noel |  | 5d | 2025-12-22 | 2025-12-29 | 19 | 100% |  |  |  | Valerdy [0%] |
| 21 | 12 | Dashboard et statistiques (ApexCharts) - reprise |  | 4d | 2025-12-29 | 2026-01-02 | 20 | 100% | 2025-12-04 | 2025-12-17 | 10d | Claude (Assistant IA) |
| 22 | 13 | Jalon: Frontend Termine | milestone | 0d | 2026-01-02 | 2026-01-02 |  | 100% | 2025-12-15 | 2025-12-15 | 0d |  |
| 23 | 14 | **Phase 4: Integration MikroTik** |  | 9d | 2026-01-02 | 2026-01-14 |  | 100% | 2025-12-01 | 2026-01-06 | 25d |  |
| 24 | 14.1 | Agent Node.js (RouterOS API) |  | 3d | 2026-01-02 | 2026-01-06 |  | 100% | 2025-12-01 | 2025-12-12 | 10d | Claude (Assistant IA) |
| 25 | 14.2 | Hotspot Users Sync + DNS Blocking |  | 4d | 2026-01-07 | 2026-01-12 | 24 | 100% | 2025-12-11 | 2025-12-19 | 7d | Claude (Assistant IA) |
| 26 | 14.3 | Pages hotspot personnalisees UCAC-ICAM |  | 2d | 2026-01-13 | 2026-01-14 | 25 | 100% | 2025-12-18 | 2025-12-30 | 8d | Valerdy |
| 27 | 15 | Jalon: Integration Complete | milestone | 0d | 2026-01-14 | 2026-01-14 |  | 100% | 2025-12-31 | 2025-12-31 | 0d |  |

Notes:
- 1: REEL: 01/09 - 20/10 (36 jours ouvrés) / PREVISIONNEL: 01/09 - 30/09 (25 jours ouvrés) / ECART: +20 jours calendaires / CAUSE: Pause de ~2,5 semaines (26/09-12/10) pour travail sur d'autres projets academiques non lies au portail captif.
- 2: Etude des besoins du campus pour la gestion WiFi securisee. / Entretiens avec le personnel IT, identification des contraintes reseau.
- 3: Analyse du materiel MikroTik RB951Ui-2HnD disponible. / Etude des solutions RADIUS existantes et choix de FreeRADIUS 3.0.
- 5: INTERRUPTION: Travail obligatoire sur d'autres projets imposes par le cursus UCAC-ICAM, sans rapport avec le portail captif. / Duree: ~2,5 semaines (13 jours ouvres) / Impact: Decalage de la phase 1 et retard en cascade sur les phases suivantes.
- 6: Reprise du travail apres la pause. / Creation des maquettes pour le dashboard admin et le portail de login.
- 7: PREVISIONNEL: 30/09/2025 / REEL: 20/10/2025 / ECART: +20 jours
- 8: REEL: 21/10 - 16/12 (41 jours ouvres, dont 8 de pause) / PREVISIONNEL: 01/10 - 20/11 (45 jours ouvres) / ECART: +26 jours calendaires / CAUSE: Debut decale de 3 semaines (cascade phase 1) + pause examens semestriels (22/11-01/12).
- 11: Tables: radcheck, radreply, radusergroup, radgroupreply, radgroupcheck, radacct, radpostauth. / Configuration du driver rlm_sql_postgresql.
- 12: INTERRUPTION: Periode d'examens semestriels et projets evalues en parallele. / Duree: ~10 jours calendaires (6 jours ouvres) / Impact: Retard supplementaire sur le backend, obligeant a compresser les phases suivantes.
- 13: Reprise intensive apres les examens. / Travail en parallele avec le debut du frontend.
- 14: Synchronisation automatique Django -> FreeRADIUS. / Systeme de retry en cas d'echec.
- 15: PREVISIONNEL: 20/11/2025 / REEL: 16/12/2025 / ECART: +26 jours
- 16: REEL: 02/12 - 03/01 (25 jours ouvres, dont 6 de pause Noel) / PREVISIONNEL: 01/11 - 15/12 (40 jours ouvres) / ECART: +19 jours calendaires / CAUSE: Debut decale (backend pas termine) + pause fetes de Noel (21-28/12). / NOTE: Travail en parallele avec la fin du backend (API REST + Sync RADIUS).
- 17: En parallele avec l'API REST du backend.
- 20: INTERRUPTION: Fetes de fin d'annee, periode non travaillee. / Duree: ~8 jours calendaires (5 jours ouvres) / Impact: Decalage de la fin du frontend et des phases 4-5-6.
- 21: Reprise apres les fetes. Integration des graphiques ApexCharts.
- 22: PREVISIONNEL: 15/12/2025 / REEL: 03/01/2026 / ECART: +19 jours
- 23: REEL: 02/01 - 12/01 (9 jours ouvres) / PREVISIONNEL: 01/12 - 31/12 (25 jours ouvres) / ECART: -19 jours calendaires par rapport a la fin prevue (compresse) / NOTE: Phase fortement compressee (11j calendaires au lieu de 31j). / L'agent Node.js et la synchronisation ont ete developpes rapidement / grace a l'experience acquise et l'assistance IA (Claude).
- 24: API REST pour communiquer avec RouterOS via le port 8728. / Express 5.1 + node-routeros-v2.
- 27: PREVISIONNEL: 31/12/2025 / REEL: 12/01/2026 / ECART: +12 jours

| ID | WBS | Task | Type | Duration | Start | Finish | Predecessors | Complete | Baseline start | Baseline finish | Baseline duration | Resources |
| --- | --- | --- | --- | --- | --- | --- | --- | --- | --- | --- | --- | --- |
| 28 | 16 | **Phase 5: Tests et Validation** |  | 2d | 2026-01-15 | 2026-01-16 |  | 100% | 2026-01-02 | 2026-01-15 | 10d |  |
| 29 | 16.1 | Tests unitaires + integration |  | 1d | 2026-01-15 | 2026-01-15 |  | 100% | 2026-01-02 | 2026-01-07 | 4d | Valerdy [50%]; Claude (Assistant IA) [50%] |
| 30 | 16.2 | Tests utilisateurs (UAT) |  | 1d | 2026-01-16 | 2026-01-16 | 29 | 100% | 2026-01-06 | 2026-01-08 | 3d | Valerdy |
| 31 | 17 | **Phase 6: Documentation et Soutenance** |  | 3d | 2026-01-16 | 2026-01-20 |  | 100% | 2026-01-10 | 2026-01-16 | 5d |  |
| 32 | 17.1 | Rapport technique |  | 2d | 2026-01-16 | 2026-01-19 |  | 100% | 2026-01-10 | 2026-01-14 | 3d | Valerdy |
| 33 | 17.2 | Preparation soutenance + PPT |  | 1d | 2026-01-20 | 2026-01-20 | 32 | 100% | 2026-01-13 | 2026-01-14 | 2d | Valerdy |
| 34 | 18 | SOUTENANCE | milestone | 0d | 2026-01-20 | 2026-01-20 |  | 100% | 2026-01-16 | 2026-01-16 | 0d |  |
| 35 | 19 | Jalon: Projet Finalise | milestone | 0d | 2026-01-20 | 2026-01-20 |  | 100% | 2026-01-15 | 2026-01-15 | 0d |  |

Notes:
- 28: REEL: 15/01 - 16/01 (2 jours ouvres) / PREVISIONNEL: 02/01 - 13/01 (10 jours ouvres) / ECART: +3 jours calendaires / NOTE: Phase reduite de 10 a 2 jours ouvres. / Les tests unitaires ont ete ecrits en parallele du developpement (TDD). / Tests d'integration et UAT effectues de maniere acceleree.
- 31: REEL: 16/01 - 20/01 (3 jours ouvres) / PREVISIONNEL: 10/01 - 16/01 (5 jours ouvres) / ECART: +4 jours calendaires / NOTE: Soutenance reportee du 16 au 20 janvier.
- 34: Presentation finale du projet. / PREVISIONNEL: 16/01/2026 / REEL: 20/01/2026 / ECART: +4 jours
- 35: PREVISIONNEL: 15/01/2026 / REEL: 20/01/2026 / ECART: +5 jours / Projet livre malgre ~35 jours de pause sur 141 jours calendaires.
